# CE64-41

How a schedule from MS Project changed from version to version. A marks actual dates.

## Version 1 (saved 2021-08-27)

| ID | WBS | Task | Duration | Start | Finish | Complete | Total float | Constraint |
| --- | --- | --- | --- | --- | --- | --- | --- | --- |
| 1 | 1 | **การวิเคราะห์ความต้องการ** | 20d | 2021-08-02 08:00 A | 2021-08-27 17:00 | 14% | 0d |  |
| 2 | 1.1 | **พัฒนาชื่อโครงการ** | 15d | 2021-08-02 08:00 A | 2021-08-20 17:00 A | 100% |  |  |
| 3 |  | ระบุเป้าหมายและวัตถุประสงค์ | 5d | 2021-08-02 08:00 A | 2021-08-06 17:00 A | 100% |  |  |
| 4 |  | พัฒนา ทบทวน อนุมัติ - ชื่อโครงการ | 10d | 2021-08-09 08:00 A | 2021-08-20 17:00 A | 100% |  |  |
| 5 | 1.2 | **ศึกษาข้อมูลและทฤษฎีที่เกี่ยวข้อง** | 15d | 2021-08-09 08:00 | 2021-08-27 17:00 |  | 0d |  |
| 6 |  | ศึกษาข้อมูลการเขียนเว็บแอพพลิเคชั่นบนBlockchain | 15d | 2021-08-09 08:00 | 2021-08-27 17:00 |  |  |  |
| 7 |  | ศึกษาข้อมูลการทำงานของBlockchain | 15d | 2021-08-09 08:00 | 2021-08-27 17:00 |  |  |  |
| 8 |  | ศึกษาข้อมูลที่เกี่ยวกับภาษา Solidity | 15d | 2021-08-09 08:00 | 2021-08-27 17:00 |  |  |  |
| 9 |  | ศึกษาข้อมูลที่เกี่ยวกับ Smart Contract | 15d | 2021-08-09 08:00 | 2021-08-27 17:00 |  |  |  |
| 10 |  | ศึกษาข้อมูลที่เกี่ยวกับ Oauth Client | 15d | 2021-08-09 08:00 | 2021-08-27 17:00 |  |  |  |
| 11 |  | ศึกษาข้อมูลของ Oauth Server | 15d | 2021-08-09 08:00 | 2021-08-27 17:00 |  |  |  |
| 12 | 2 | **การออกแบบ** | 25d? | 2021-08-30 08:00 | 2021-10-01 17:00 |  | 0d |  |
| 13 | 2.1 | **จัดการและออกแบบClient** | 25d | 2021-08-30 08:00 | 2021-10-01 17:00 |  | 0d |  |
| 14 |  | ออกแบบหน้า User Interface | 5d | 2021-08-30 08:00 | 2021-09-03 17:00 |  |  |  |
| 15 |  | ระบบลงทะเบียน(Login/Register) | 5d | 2021-09-06 08:00 | 2021-09-10 17:00 |  |  |  |
| 16 |  | จัดการระบบฐานข้อมูล | 5d | 2021-09-13 08:00 | 2021-09-17 17:00 |  |  |  |
| 17 |  | ตรวจสอบสถานะข้อมูล | 10d | 2021-09-20 08:00 | 2021-10-01 17:00 |  |  |  |
| 18 | 2.2 | **จัดการ และออกแบบ credentialstore** | 15d? | 2021-08-30 08:00 | 2021-09-17 17:00 |  |  |  |
| 19 |  | ออกแบบ interface | 5d | 2021-08-30 08:00 | 2021-09-03 17:00 |  |  |  |
| 20 |  | ออกแบบโครงสร้าง | 10d | 2021-09-06 08:00 | 2021-09-17 17:00 |  |  |  |
| 21 | 2.3 | **จัดการ และออกแบบ services** | 15d? | 2021-08-30 08:00 | 2021-09-17 17:00 |  |  |  |
| 22 |  | ออกแบบ interface | 5d | 2021-08-30 08:00 | 2021-09-03 17:00 |  |  |  |
| 23 |  | ทดลองการ Authorization | 5d | 2021-09-06 08:00 | 2021-09-10 17:00 |  |  |  |
| 24 |  | ติดต่อกับ Smart Contract | 5d | 2021-09-13 08:00 | 2021-09-17 17:00 |  |  |  |
| 25 | 3 | **รายงาน** | 66d | 2021-08-26 08:00 | 2021-11-26 08:00 |  | 0d |  |
| 26 | 3.1 | **ความคืบหน้ารายงาน** | 65d | 2021-08-27 08:00 | 2021-11-26 08:00 |  | 0d |  |
| 27 |  | รายงานความก้าวหน้าครั้งที่ 1 | 0d | 2021-08-27 08:00 | 2021-08-27 08:00 |  |  |  |
| 28 |  | รายงานความก้าวหน้าครั้งที่ 2 | 0d | 2021-09-10 08:00 | 2021-09-10 08:00 |  |  |  |
| 29 |  | รายงานความก้าวหน้าครั้งที่ 3 | 0d | 2021-09-24 08:00 | 2021-09-24 08:00 |  |  |  |
| 30 |  | รายงานความก้าวหน้าครั้งที่ 4 | 0d | 2021-10-15 08:00 | 2021-10-15 08:00 |  |  |  |
| 31 |  | รายงานความก้าวหน้าครั้งที่ 5 | 0d | 2021-11-05 08:00 | 2021-11-05 08:00 |  |  |  |
| 32 |  | รายงานความก้าวหน้าครั้งที่ 6 | 0d | 2021-11-26 08:00 | 2021-11-26 08:00 |  |  |  |
| 33 | 3.2 | **Status Update Meeting** | 45.12d | 2021-08-26 08:00 | 2021-10-28 09:00 |  | 0d |  |
| 34 |  | Status Update Meeting 1 | 1h | 2021-08-26 08:00 | 2021-08-26 09:00 |  |  | start no earlier than 2021-08-26 08:00 |
| 35 |  | Status Update Meeting 2 | 1h | 2021-09-02 08:00 | 2021-09-02 09:00 |  |  | start no earlier than 2021-09-02 08:00 |
| 36 |  | Status Update Meeting 3 | 1h | 2021-09-09 08:00 | 2021-09-09 09:00 |  |  | start no earlier than 2021-09-09 08:00 |
| 37 |  | Status Update Meeting 4 | 1h | 2021-09-16 08:00 | 2021-09-16 09:00 |  |  | start no earlier than 2021-09-16 08:00 |
| 38 |  | Status Update Meeting 5 | 1h | 2021-09-23 08:00 | 2021-09-23 09:00 |  |  | start no earlier than 2021-09-23 08:00 |
| 39 |  | Status Update Meeting 6 | 1h | 2021-09-30 08:00 | 2021-09-30 09:00 |  |  | start no earlier than 2021-09-30 08:00 |
| 40 |  | Status Update Meeting 7 | 1h | 2021-10-07 08:00 | 2021-10-07 09:00 |  |  | start no earlier than 2021-10-07 08:00 |
| 41 |  | Status Update Meeting 8 | 1h | 2021-10-14 08:00 | 2021-10-14 09:00 |  |  | start no earlier than 2021-10-14 08:00 |
| 42 |  | Status Update Meeting 9 | 1h | 2021-10-21 08:00 | 2021-10-21 09:00 |  |  | start no earlier than 2021-10-21 08:00 |
| 43 |  | Status Update Meeting 10 | 1h | 2021-10-28 08:00 | 2021-10-28 09:00 |  |  | start no earlier than 2021-10-28 08:00 |

## Version 2 (saved 2022-02-21)

Last finish 2021-11-26 → 2022-02-18 (+84d). Complete tasks 2 → 32.

Added:

| ID | Task | Duration | Start | Finish | Predecessors | Constraint | Resources |
| --- | --- | --- | --- | --- | --- | --- | --- |
| 1 | Baseline Work | 0d | 2021-09-24 | 2021-09-24 |  |  |  |
| 7 | Learn fundamentals of Dapp on Ethereum | 1d | 2021-08-13 A | 2021-08-13 |  |  | Dev Team |
| 8 | Learn about SmartContract in Solidity | 1d | 2021-08-16 A | 2021-08-16 | 7 |  | Dev Team |
| 9 | Learn about variable and expression in Solidity | 1d | 2021-08-17 A | 2021-08-17 | 8 |  | Dev Team |
| 10 | Learn about struct and array in Solidity | 1d | 2021-08-18 A | 2021-08-18 | 9 |  | Dev Team |
| 11 | Learn about functions in Solidity | 1d | 2021-08-19 A | 2021-08-19 | 10 |  | Dev Team |
| 12 | Learn about events in Solidity | 1d | 2021-08-20 A | 2021-08-20 | 11 |  | Dev Team |
| 13 | Learn about web3.js | 2d | 2021-08-23 A | 2021-08-24 | 12 |  | Dev Team |
| 14 | Discuss System Architecture | 1d | 2021-08-25 A | 2021-08-25 | 13 |  | Dev Team |
| 18 | diagram ของ OAuth Web Service | 5d | 2021-11-12 A | 2021-11-18 | 63 |  | Chatchai |
| 20 | class diagram ของ Ethereum SmartContract | 5d | 2021-11-19 A | 2021-11-25 | 19 |  | Kritsana |
| 21 | user registration flow ของ OAuth Web Service | 5d | 2022-01-21 A | 2022-01-27 |  |  |  |
| 22 | authorization flow ของ Oauth Web Service | 5d | 2022-02-04 A | 2022-02-10 |  |  |  |
| 23 | **การดำเนินงาน** | 128d | 2021-08-26 A | 2022-02-18 |  |  |  |
| 24 | **Web App** | 126d | 2021-08-26 A | 2022-02-17 |  |  |  |
| 27 | Learn how to use phpMyAdmin | 1d | 2021-08-30 A | 2021-08-30 A | 26 |  | Phongpak |
| 28 | Learn how to setup and use Django | 2d | 2021-08-31 A | 2021-09-01 A | 27 |  | Phongpak |
| 29 | Create a template and model with Django | 2d | 2021-09-02 A | 2021-09-03 A | 28 |  | Phongpak |
| 30 | Create the To-Do List | 2d | 2021-09-06 A | 2021-09-07 A | 29 |  | Phongpak |
| 31 | Create admin page | 2d | 2021-09-08 A | 2021-09-09 | 30 |  | Phongpak |
| 35 | เชื่อมต่อ Web App กับ Oauth Web Service | 5d | 2022-01-21 A | 2022-01-27 |  |  |  |
| 36 | Oauth Web Service เพื่อ authentication | 5d | 2022-01-28 A | 2022-02-03 |  |  |  |
| 37 | ปรับแต่ง UI หน้า Redirect ของ Web App | 5d | 2022-02-11 A | 2022-02-17 |  |  |  |
| 38 | **Web service** | 126d | 2021-08-26 A | 2022-02-17 |  |  |  |
| 40 | เรียนรู้เกียวกับ Flows ในมาตราฐาน Oauth | 4d | 2021-08-27 A | 2021-09-01 A | 39 |  | Chatchai |
| 41 | Crate example web app | 3d | 2021-09-02 A | 2021-09-06 A | 40 |  | Chatchai |
| 42 | Follow the OAuth tutorial with Google | 3d | 2021-09-07 A | 2021-09-09 | 41 |  | Chatchai |
| 45 | ปรับแต่ง UI หน้า Redirect ของ Oauth Web Service | 5d | 2022-02-11 A | 2022-02-17 |  |  |  |
| 46 | **Credential Store** | 126d | 2021-08-26 A | 2022-02-17 |  |  |  |
| 55 | refresh authorization token ของ Oauth Web Service | 5d | 2022-02-11 A | 2022-02-17 |  |  |  |
| 56 | **รายงานและคู่มือ** | 70.12d | 2021-08-26 A | 2021-12-02 |  |  |  |
| 57 | **ร่างรายงาน** | 46d | 2021-09-24 A | 2021-11-26 |  |  |  |
| 58 | ร่างรายงานบทที่ 1 | 10d | 2021-09-24 A | 2021-10-07 A | 44 |  | Chatchai |
| 59 | ร่างรายงานบทที่ 2 เรื่อง Web Service | 10d | 2021-10-15 A | 2021-10-28 | 34 |  | Phongpak |
| 60 | ร่างรายงานบทที่ 2 เรื่อง Oauth 2.0 | 10d | 2021-10-22 A | 2021-11-04 | 54 |  | Chatchai |
| 61 | ร่างรายงานบทที่ 2 เรื่อง Blockchain | 10d | 2021-10-22 A | 2021-11-04 | 54 |  | Kritsana |
| 62 | ร่างรายงานบทที่ 3 เรื่อง Web App Design | 6d | 2021-11-05 A | 2021-11-12 | 61 |  | Phongpak |
| 63 | ร่างรายงานบทที่ 3 เรื่อง Oauth Authorization Server Design | 5d | 2021-11-05 A | 2021-11-11 | 61 |  | Chatchai |
| 64 | ร่างรายงานบทที่ 3 เรื่อง Ethereum SmartContract Design | 5d | 2021-11-05 A | 2021-11-11 | 61 |  | Kritsana |
| 65 | ตรวจสอบและแก้ไข รายงานบทที่ 3 | 6d | 2021-11-19 | 2021-11-26 | 19 |  | Dev Team |
| 66 | **รายงานความก้าวหน้า** | 70.12d | 2021-08-26 A | 2021-12-02 |  |  |  |
| 73 | **ประชุมอัพเดตความก้าวหน้า** | 70.12d | 2021-08-26 A | 2021-12-02 |  |  |  |
| 74 | ประชุมอัพเดตความก้าวหน้า 1 | 1h | 2021-08-26 A | 2021-08-26 A |  | start no earlier than 2021-08-26 |  |
| 75 | ประชุมอัพเดตความก้าวหน้า 2 | 1h | 2021-09-02 A | 2021-09-02 A |  | start no earlier than 2021-09-02 |  |
| 76 | ประชุมอัพเดตความก้าวหน้า 3 | 1h | 2021-09-09 A | 2021-09-09 A |  | start no earlier than 2021-09-09 |  |
| 77 | ประชุมอัพเดตความก้าวหน้า 4 | 1h | 2021-09-16 A | 2021-09-16 A |  | start no earlier than 2021-09-16 |  |
| 78 | ประชุมอัพเดตความก้าวหน้า 5 | 1h | 2021-09-23 A | 2021-09-23 A |  | start no earlier than 2021-09-23 |  |
| 79 | ประชุมอัพเดตความก้าวหน้า 6 | 1h | 2021-10-07 A | 2021-10-07 A |  | start no earlier than 2021-10-07 |  |
| 80 | ประชุมอัพเดตความก้าวหน้า 7 | 1h | 2021-10-14 A | 2021-10-14 A |  | start no earlier than 2021-10-14 |  |
| 81 | ประชุมอัพเดตความก้าวหน้า 8 | 1h | 2021-10-28 A | 2021-10-28 A |  | start no earlier than 2021-10-28 |  |
| 82 | ประชุมอัพเดตความก้าวหน้า 9 | 1h | 2021-11-04 A | 2021-11-04 A |  | start no earlier than 2021-11-04 |  |
| 83 | ประชุมอัพเดตความก้าวหน้า 10 | 1h | 2021-11-11 A | 2021-11-11 A |  | start no earlier than 2021-11-11 |  |
| 84 | ประชุมอัพเดตความก้าวหน้า 11 | 1h | 2021-11-18 A | 2021-11-18 A |  | start no earlier than 2021-11-18 |  |
| 85 | ประชุมอัพเดตความก้าวหน้า 12 | 1h | 2021-11-25 | 2021-11-25 |  | start no earlier than 2021-11-25 |  |
| 86 | ประชุมอัพเดตความก้าวหน้า 13 | 1h | 2021-12-02 | 2021-12-02 |  | start no earlier than 2021-12-02 |  |

Removed: 6 ศึกษาข้อมูลการเขียนเว็บแอพพลิเคชั่นบนBlockchain; 7 ศึกษาข้อมูลการทำงานของBlockchain; 8 ศึกษาข้อมูลที่เกี่ยวกับภาษา Solidity; 9 ศึกษาข้อมูลที่เกี่ยวกับ Smart Contract; 10 ศึกษาข้อมูลที่เกี่ยวกับ Oauth Client; 13 จัดการและออกแบบClient; 19 ออกแบบ interface; 20 ออกแบบโครงสร้าง; 21 จัดการ และออกแบบ services; 23 ทดลองการ Authorization; 39 Status Update Meeting 6; 43 Status Update Meeting 10

Changed:

| ID | Task | Start | Finish | Duration | Complete | Total float | Predecessors | Other |
| --- | --- | --- | --- | --- | --- | --- | --- | --- |
| 2 | **การวิเคราะห์ความต้องการ** | 2021-08-02 08:00 A → 2021-08-02 A | 2021-08-27 17:00 → 2021-08-26 (-1d) | 20d → 19d | 14% → 91% |  |  | baseline start none → 2021-08-02; baseline finish none → 2021-08-26 |
| 3 | **พัฒนาชื่อโครงการ** | 2021-08-02 08:00 A → 2021-08-02 A | 2021-08-20 17:00 A → 2021-08-20 A |  |  |  |  | baseline start none → 2021-08-02; baseline finish none → 2021-08-20 |
| 4 | ระบุเป้าหมายและวัตถุประสงค์ | 2021-08-02 08:00 A → 2021-08-02 A | 2021-08-06 17:00 A → 2021-08-06 A |  |  |  |  | resources none → Dev Team; baseline start none → 2021-08-02; baseline finish none → 2021-08-06 |
| 5 | พัฒนา ทบทวน อนุมัติ - ชื่อโครงการ | 2021-08-09 08:00 A → 2021-08-09 A | 2021-08-20 17:00 A → 2021-08-20 A |  |  |  |  | resources none → Dev Team1; baseline start none → 2021-08-09; baseline finish none → 2021-08-20 |
| 6 | **ศึกษาข้อมูลและทฤษฎีที่เกี่ยวข้อง** | 2021-08-09 08:00 → 2021-08-13 A (+4d) | 2021-08-27 17:00 → 2021-08-26 (-1d) | 15d → 10d | 0% → 75% | 0d → none |  | baseline start none → 2021-08-13; baseline finish none → 2021-08-26 |
| 15 | **การออกแบบ** | 2021-08-30 08:00 → 2021-11-12 A (+74d) | 2021-10-01 17:00 → 2022-02-10 (+132d) | 25d? → 65d | 0% → 50% |  |  | baseline start none → 2021-11-12; baseline finish none → 2021-11-25 |
| 16 | use case diagram ของ Web App | 2021-09-13 08:00 → 2021-11-15 A (+63d) | 2021-09-17 17:00 → 2021-11-16 (+60d) | 5d → 2d | 0% → 50% |  | none → 62 | was named ติดต่อกับ Smart Contract; resources none → Phongpak; baseline start none → 2021-11-15; baseline finish none → 2021-11-16 |
| 17 | class diagram ของ Web App | 2021-08-30 08:00 → 2021-11-17 A (+79d) | 2021-09-03 17:00 → 2021-11-18 (+76d) | 5d → 2d | 0% → 50% |  | none → 16 | was named ออกแบบ interface; resources none → Phongpak; baseline start none → 2021-11-17; baseline finish none → 2021-11-18 |
| 19 | use case diagram ของ Ethereum SmartContract | 2021-08-09 08:00 → 2021-11-12 A (+95d) | 2021-08-27 17:00 → 2021-11-18 (+83d) | 15d → 5d | 0% → 50% |  | none → 64 | was named ศึกษาข้อมูลของ Oauth Server; resources none → Kritsana; baseline start none → 2021-11-12; baseline finish none → 2021-11-18 |
| 25 | Learn how to setup XAMPP | 2021-09-06 08:00 → 2021-08-26 A (-11d) | 2021-09-10 17:00 → 2021-08-26 A (-15d) | 5d → 1d | 0% → 100% |  | none → 14 | was named ระบบลงทะเบียน(Login/Register); resources none → Phongpak; baseline start none → 2021-08-26; baseline finish none → 2021-08-26 |
| 26 | Learn how to use MySQL | 2021-08-30 08:00 → 2021-08-27 A (-3d) | 2021-09-03 17:00 → 2021-08-27 A (-7d) | 5d → 1d | 0% → 100% |  | none → 25 | was named ออกแบบหน้า User Interface; resources none → Phongpak; baseline start none → 2021-08-27; baseline finish none → 2021-08-27 |
| 32 | Add user registration page on Web App | 2021-08-26 08:00 → 2021-09-10 A (+15d) | 2021-11-26 08:00 → 2021-09-23 (-64d) | 66d → 10d | 0% → 75% | 0d → none | none → 31 | was named รายงาน; resources none → Phongpak; baseline start none → 2021-09-10; baseline finish none → 2021-09-23 |
| 33 | Custom Web App's UI | 2021-09-23 08:00 → 2021-09-24 A (+1d) | 2021-09-23 09:00 → 2021-10-07 (+14d) | 1h → 10d | 0% → 50% |  | none → 32 | was named Status Update Meeting 5; constraint start no earlier than 2021-09-23 08:00 → none; resources none → Phongpak; baseline start none → 2021-09-24; baseline finish none → 2021-10-07 |
| 34 | Add a feature to share and permission system for a To-Do task | 2021-09-16 08:00 → 2021-10-08 A (+22d) | 2021-09-16 09:00 → 2021-10-14 (+28d) | 1h → 5d | 0% → 30% |  | none → 33 | was named Status Update Meeting 4; constraint start no earlier than 2021-09-16 08:00 → none; resources none → Phongpak; baseline start none → 2021-10-08; baseline finish none → 2021-10-14 |
| 39 | เรียนรู้เกียวกับ Rols ในมาตราฐาน Oauth | 2021-09-13 08:00 → 2021-08-26 A (-18d) | 2021-09-17 17:00 → 2021-08-26 A (-22d) | 5d → 1d | 0% → 100% |  | none → 14 | was named จัดการระบบฐานข้อมูล; resources none → Chatchai; baseline start none → 2021-08-26; baseline finish none → 2021-08-26 |
| 43 | ทดลองเขียน REST Web Service ด้วย NodeJS | 2021-10-14 08:00 → 2021-09-10 A (-34d) | 2021-10-14 09:00 → 2021-09-16 (-28d) | 1h → 5d | 0% → 50% |  | none → 42 | was named Status Update Meeting 8; constraint start no earlier than 2021-10-14 08:00 → none; resources none → Chatchai; baseline start none → 2021-09-10; baseline finish none → 2021-09-15 |
| 44 | เรียนรู้แนวทางการใช้ Express.js ออกแบบ Web Service API | 2021-10-07 08:00 → 2021-09-17 A (-20d) | 2021-10-07 09:00 → 2021-09-23 (-14d) | 1h → 5d | 0% → 50% |  | none → 43 | was named Status Update Meeting 7; constraint start no earlier than 2021-10-07 08:00 → none; resources none → Chatchai; baseline start none → 2021-09-17; baseline finish none → 2021-09-22 |
| 47 | เรียนรู้วิธีใช้ Truffle | 2021-09-20 08:00 → 2021-08-26 A (-25d) | 2021-10-01 17:00 → 2021-08-30 A (-32d) | 10d → 3d | 0% → 100% |  | none → 14 | was named ตรวจสอบสถานะข้อมูล; resources none → Kritsana; baseline start none → 2021-08-26; baseline finish none → 2021-08-27 |
| 48 | เรียนรู้วิธีใช้ Ganache | 2021-08-30 08:00 → 2021-08-31 A (+1d) | 2021-09-17 17:00 → 2021-09-01 A (-16d) | 15d? → 2d | 0% → 100% |  | none → 47 | was named จัดการ และออกแบบ credentialstore; resources none → Kritsana; baseline start none → 2021-08-31; baseline finish none → 2021-08-31 |
| 49 | ทดลองสร้าง contract และ functions ใน Solidity | 2021-09-09 08:00 → 2021-09-02 A (-7d) | 2021-09-09 09:00 → 2021-09-15 A (+6d) | 1h → 10d | 0% → 100% |  | none → 48 | was named Status Update Meeting 3; constraint start no earlier than 2021-09-09 08:00 → none; resources none → Kritsana; baseline start none → 2021-09-02; baseline finish none → 2021-09-14 |
| 50 | เรียก SmartContract จาก web3.js | 2021-09-02 08:00 → 2021-09-16 A (+14d) | 2021-09-02 09:00 → 2021-09-20 A (+18d) | 1h → 3d | 0% → 100% |  | none → 49 | was named Status Update Meeting 2; constraint start no earlier than 2021-09-02 08:00 → none; resources none → Kritsana; baseline start none → 2021-09-16; baseline finish none → 2021-09-17 |
| 51 | เขียนอ่านข้อมูลจาก SmartContract | 2021-08-26 08:00 → 2021-09-21 A (+26d) | 2021-08-26 09:00 → 2021-09-23 (+28d) | 1h → 3d | 0% → 75% |  | none → 50 | was named Status Update Meeting 1; constraint start no earlier than 2021-08-26 08:00 → none; resources none → Kritsana; baseline start none → 2021-09-21; baseline finish none → 2021-09-22 |
| 52 | ติดตั้งและทดสอบ SmartContract บน Testnet | 2021-08-26 08:00 → 2021-09-24 A (+29d) | 2021-10-28 09:00 → 2021-10-07 (-21d) | 45.12d → 10d | 0% → 50% | 0d → none | none → 51 | was named Status Update Meeting; resources none → Kritsana; baseline start none → 2021-09-24; baseline finish none → 2021-10-06 |
| 53 | ออกแบบโครงสร้างข้อมูล Blockchain | 2021-08-27 08:00 → 2021-10-08 A (+42d) | 2021-11-26 08:00 → 2021-10-14 (-43d) | 65d → 5d | 0% → 50% | 0d → none | none → 52 | was named ความคืบหน้ารายงาน; resources none → Kritsana; baseline start none → 2021-10-08; baseline finish none → 2021-10-13 |
| 54 | Web Service & Blockchain Integration | 2021-10-21 08:00 → 2021-10-15 A (-6d) | 2021-10-21 09:00 → 2021-10-21 | 1h → 5d | 0% → 25% |  | none → 53 | was named Status Update Meeting 9; constraint start no earlier than 2021-10-21 08:00 → none; resources none → Kritsana; Chatchai; baseline start none → 2021-10-15; baseline finish none → 2021-10-21 |
| 67 | รายงานความก้าวหน้าครั้งที่ 1 | 2021-08-27 08:00 → 2021-08-27 A | 2021-08-27 08:00 → 2021-08-27 A |  | 0% → 100% |  |  | resources none → Dev Team; baseline start none → 2021-08-27; baseline finish none → 2021-08-27 |
| 68 | รายงานความก้าวหน้าครั้งที่ 2 | 2021-09-10 08:00 → 2021-09-10 A | 2021-09-10 08:00 → 2021-09-10 A |  | 0% → 100% |  |  | resources none → Dev Team; baseline start none → 2021-09-10; baseline finish none → 2021-09-10 |
| 69 | รายงานความก้าวหน้าครั้งที่ 3 | 2021-09-24 08:00 → 2021-09-24 A | 2021-09-24 08:00 → 2021-09-24 A |  | 0% → 100% |  |  | resources none → Dev Team; baseline start none → 2021-09-24; baseline finish none → 2021-09-24 |
| 70 | รายงานความก้าวหน้าครั้งที่ 4 | 2021-10-15 08:00 → 2021-10-15 A | 2021-10-15 08:00 → 2021-10-15 A |  | 0% → 100% |  |  | resources none → Dev Team; baseline start none → 2021-10-15; baseline finish none → 2021-10-15 |
| 71 | รายงานความก้าวหน้าครั้งที่ 5 | 2021-11-05 08:00 → 2021-11-05 A | 2021-11-05 08:00 → 2021-11-05 A |  | 0% → 100% |  |  | resources none → Dev Team; baseline start none → 2021-11-05; baseline finish none → 2021-11-05 |
| 72 | รายงานความก้าวหน้าครั้งที่ 6 | 2021-11-26 08:00 → 2021-11-26 | 2021-11-26 08:00 → 2021-11-26 |  |  |  |  | resources none → Dev Team; baseline start none → 2021-11-26; baseline finish none → 2021-11-26 |
